# Projet GL

Schedule from Planner, 2025-12-15 to 2026-01-22.
Ensimag

## Calendars

- Default: Mon-Fri 08:00-12:00, 13:00-17:00; Sat-Sun off.
- Default: Mon-Fri 08:00-12:00, 13:00-17:00; Sat-Sun off. Exceptions (off unless hours are given): 2025-12-23 to 2025-12-27, 2025-12-30 to 2026-01-03.
- Default: Mon-Fri 08:00-12:00, 13:00-17:00; Sat-Sun off.
- Default: Mon-Fri 08:00-12:00, 13:00-17:00; Sat-Sun off.

## Resources

| Resource |
| --- |
| Fatima-azzahra ARDAN |
| Mohammed EL ARABI |
| Faical EL GOUIJ |
| Hamza MOUNTASSIR |
| Ayoub TOUATI |

## Schedule

| ID | WBS | Task | Type | Duration | Start | Finish | Predecessors | Resources | Work |
| --- | --- | --- | --- | --- | --- | --- | --- | --- | --- |
| 1 | 1 | **Prise en main du projet** |  | 3.62d | 2025-12-15 08:00 | 2025-12-18 14:00 |  |  | 45h |
| 2 | 1.1 | Mise en place de l'environnement |  | 1d | 2025-12-15 08:00 | 2025-12-15 17:00 |  | Fatima-azzahra ARDAN [20%]; Mohammed EL ARABI [20%]; Faical EL GOUIJ [20%]; Hamza MOUNTASSIR [20%]; Ayoub TOUATI [20%] | 8h |
| 3 | 1.2 | Visionnage des vidéos du projet |  | 3d | 2025-12-15 08:00 | 2025-12-17 17:00 |  | Fatima-azzahra ARDAN [20%]; Mohammed EL ARABI [20%]; Faical EL GOUIJ [20%]; Hamza MOUNTASSIR [20%]; Ayoub TOUATI [20%] | 24h |
| 4 | 1.3 | Lecture ciblée de la documentation |  | 0.12d | 2025-12-18 08:00 | 2025-12-18 09:00 | 3 | Fatima-azzahra ARDAN; Mohammed EL ARABI; Faical EL GOUIJ; Hamza MOUNTASSIR; Ayoub TOUATI | 5h |
| 5 | 1.4 | Planning / Documentation |  | 0.5d | 2025-12-18 09:00 | 2025-12-18 14:00 | 4 | Mohammed EL ARABI; Ayoub TOUATI | 8h |
| 6 | 2 | **Validation chaîne minimale (Hello world - Suivi 1)** |  | 0.33d | 2025-12-18 08:00 | 2025-12-18 10:40 |  |  | 8h |
| 7 | 2.1 | Validation chaîne minimale (Hello world) |  | 0.33d | 2025-12-18 08:00 | 2025-12-18 10:40 | 3, 2 | Fatima-azzahra ARDAN; Faical EL GOUIJ; Hamza MOUNTASSIR | 8h |
| 8 | 3 | **Analyse lexicosyntaxique (Étape A complète)** |  | 2.38d | 2025-12-18 09:00 | 2025-12-22 12:00 |  |  | 72h |
| 9 | 3.1 | Analyse lexicale (Lexer) |  | 2d | 2025-12-18 09:00 | 2025-12-22 09:00 | 4 | Mohammed EL ARABI; Hamza MOUNTASSIR | 32h |
| 10 | 3.2 | Analyse syntaxique (Parser) |  | 2d | 2025-12-18 09:00 | 2025-12-22 09:00 | 4 | Mohammed EL ARABI; Hamza MOUNTASSIR | 32h |
| 11 | 3.3 | Tests lexicaux et syntaxiques |  | 0.5d | 2025-12-22 08:00 | 2025-12-22 12:00 | 10SS+48h, 9SS+48h | Mohammed EL ARABI; Ayoub TOUATI | 8h |
| 12 | 4 | **Vérifications contextuelles (Étape B - sans objet)** |  | 3.25d | 2025-12-22 12:00 | 2026-01-06 15:00 | 8 |  | 67.75h |
| 13 | 4.1 | Passe 1 & 2 |  | 2.69d | 2025-12-22 12:00 | 2026-01-06 09:30 | 10SS+24h | Faical EL GOUIJ | 21.5h |
| 14 | 4.2 | Passe 3 |  | 2.75d | 2025-12-29 08:00 | 2026-01-06 15:00 | 13SS+24h | Fatima-azzahra ARDAN | 22h |
| 15 | 4.3 | Tests contextuels |  | 1.52d | 2025-12-29 08:00 | 2026-01-05 13:06 | 14SS, 13SS+48h | Mohammed EL ARABI; Ayoub TOUATI | 24.25h |
| 16 | 5 | **Génération de code (Étape C - sans objet)** |  | 3.49d | 2026-01-06 15:00 | 2026-01-12 09:55 | 12 |  | 59.5h |
| 17 | 5.1 | Génération de code (instructions simples) |  | 1d | 2026-01-06 15:00 | 2026-01-07 15:00 | 10SS+48h | Mohammed EL ARABI; Ayoub TOUATI | 16h |
| 18 | 5.2 | Gestion pile et registres |  | 0.49d | 2026-01-07 15:00 | 2026-01-08 09:51 | 17SS+24h | Mohammed EL ARABI; Ayoub TOUATI | 7.75h |
| 19 | 5.3 | Tests génération de code (IMA) |  | 1.49d | 2026-01-08 15:00 | 2026-01-12 09:55 | 17SS, 18SS+24h | Fatima-azzahra ARDAN; Faical EL GOUIJ; Hamza MOUNTASSIR | 35.75h |
| 20 | 6 | **Consolidation sans objet (rendu intermédiaire)** |  | 0.2d | 2026-01-05 13:06 | 2026-01-05 14:41 |  |  | 16h |
| 21 | 6.1 | Corrections et code refactoring |  | 0.2d | 2026-01-05 13:06 | 2026-01-05 14:41 | 15, 11 | Fatima-azzahra ARDAN; Mohammed EL ARABI; Faical EL GOUIJ; Hamza MOUNTASSIR; Ayoub TOUATI | 8h |
| 22 | 6.2 | Base de tests finale sans objet |  | 0.2d | 2026-01-05 13:06 | 2026-01-05 14:41 | 11, 15 | Fatima-azzahra ARDAN; Mohammed EL ARABI; Faical EL GOUIJ; Hamza MOUNTASSIR; Ayoub TOUATI | 8h |
| 23 | 7 | Marge de sécurité avant rendu intermédiaire |  | 2d | 2026-01-05 14:41 | 2026-01-07 14:41 | 22, 21 |  | 8h |
| 24 | 8 | Rendu intermédiaire | milestone | 0d | 2026-01-07 15:00 | 2026-01-07 15:00 | 23, 15, 17 |  |  |

| ID | WBS | Task | Type | Duration | Start | Finish | Predecessors | Constraint | Resources | Work |
| --- | --- | --- | --- | --- | --- | --- | --- | --- | --- | --- |
| 25 | 9 | **Compilation du langage complet** |  | 0.7d | 2026-01-07 15:00 | 2026-01-08 11:35 |  |  |  | 24h |
| 26 | 9.1 | Complétion de l'étape B |  | 0.33d | 2026-01-07 15:00 | 2026-01-08 08:40 | 24 |  | Mohammed EL ARABI; Hamza MOUNTASSIR; Ayoub TOUATI | 8h |
| 27 | 9.2 | Complétion de l'étape C |  | 0.5d | 2026-01-07 15:00 | 2026-01-08 10:00 | 24 |  | Fatima-azzahra ARDAN; Faical EL GOUIJ | 8h |
| 28 | 9.3 | Tests finaux pour le compilateur |  | 0.2d | 2026-01-08 10:00 | 2026-01-08 11:35 | 27, 26 |  | Fatima-azzahra ARDAN; Mohammed EL ARABI; Faical EL GOUIJ; Hamza MOUNTASSIR; Ayoub TOUATI | 8h |
| 29 | 10 | **Extension** |  | 0.2d | 2026-01-08 11:35 | 2026-01-08 14:10 |  |  |  | 16h |
| 30 | 10.1 | Implémentation de l'extension |  | 0.2d | 2026-01-08 11:35 | 2026-01-08 14:10 | 28 |  | Fatima-azzahra ARDAN; Mohammed EL ARABI; Faical EL GOUIJ; Hamza MOUNTASSIR; Ayoub TOUATI | 8h |
| 31 | 10.2 | Tests pour l'extension |  | 0.2d | 2026-01-08 11:35 | 2026-01-08 14:10 | 30SS |  | Fatima-azzahra ARDAN; Mohammed EL ARABI; Faical EL GOUIJ; Hamza MOUNTASSIR; Ayoub TOUATI | 8h |
| 32 | 11 | Rendu Final | milestone | 0d | 2026-01-19 08:00 | 2026-01-19 00:00 |  | must start on 2026-01-19 00:00 |  |  |
| 33 | 12 | Rendu Bilan | milestone | 0d | 2026-01-21 08:00 | 2026-01-21 00:00 |  | must start on 2026-01-21 00:00 |  |  |
| 34 | 13 | Rendu documentation | milestone | 0d | 2026-01-12 08:00 | 2026-01-12 00:00 |  | must start on 2026-01-12 00:00 |  |  |
| 35 | 14 | Soutenance | milestone | 0d | 2026-01-22 08:00 | 2026-01-22 00:00 |  | must start on 2026-01-22 00:00 |  |  |
